| slug | name | methodology | start_date | calendar | default_view | dependencies | baselines | risks | wbs_path | delivery_mode | status | percent_complete | assignee | duration | planned_start | estimate | is_milestone |
| --- | --- | --- | --- | --- | --- | --- | --- | --- | --- | --- | --- | --- | --- | --- | --- | --- | --- |
| bayside | Bayside Civic Center | WATERFALL | A-90 | site | SCHEDULE | 1.1 1.2 FS 0, 1.1 1.3 SS 0, 1.2 1.4 FS 0, 1.3 1.4 FS 0, 1.4 2.1 FS 0, 2.1 2.2 FS 0, 2.2 2.3 FS 0, 2.2 2.4 SS 0, 2.3 2.5 FF 0, 2.4 2.5 FF 0, 2.5 3.1 FS 0, 3.1 3.2 FS 0, 3.1 3.3 FS 0, 3.2 3.4 FF 0, 3.3 3.4 FF 0, 3.4 4.1 FS 0, 3.4 4.2 FS 0, 3.4 4.3 FS 0, 4.1 4.5 FS 0, 4.2 4.5 FS 0, 4.3 4.5 FS 0, 4.5 5.1 FS 0, 5.1 5.2 FS 0, 5.1 5.3 FS 0, 5.2 5.4 SF 0, 5.2 5.5 FS 0, 5.3 5.5 FS 0 | Contract baseline True 1.1 A-90 A-86 4, 1.2 A-82 A-76 6, 1.3 A-70 A-67 3, 1.4 A-64 A-62 2, 2.1 A-60 A-55 5, 2.2 A-50 A-44 6, 2.3 A-38 A-35 3, 2.4 A-32 A-29 3, 2.5 A-26 A-22 4, 3.1 A-18 A-10 8, 3.2 A-2 A+4 6, 3.3 A+10 A+17 7, 3.4 A+24 A+26 2, 4.1 A+28 A+35 7, 4.2 A+42 A+48 6, 4.3 A+54 A+62 8, 4.4 A+70 A+75 5, 4.5 A+80 A+83 3, 5.1 A+86 A+94 8, 5.2 A+102 A+108 6, 5.3 A+114 A+119 5, 5.5 A+126 A+129 3 | weather Weather delays outdoor phases OPEN 4 3 EXTERNAL MITIGATE sam 2.3, 2.4, supply-chain MEP equipment supply delay MITIGATING 3 5 EXTERNAL MITIGATE nadia 4.4, inspection-fail Framing inspection rework OPEN 2 4 TECHNICAL ACCEPT diego 3.4, labor Concrete crew availability OPEN 3 3 ORGANIZATIONAL MITIGATE tom 2.3, permit-delay Building permit approval slips The municipal permit office is running 3 weeks behind; gates site prep sign-off. OPEN 3 5 EXTERNAL MITIGATE sam 1.4, design-change Owner-requested design change order OPEN 3 4 PROJECT_MANAGEMENT MITIGATE diego 3.1, soil-conditions Unexpected soil conditions at excavation OPEN 2 4 TECHNICAL ACCEPT tom Geotech survey confirmed bearing capacity; no remediation needed. 2.1, subcontractor-default MEP subcontractor financial risk Primary MEP sub is over-extended; default would strand the rough-in. OPEN 2 5 EXTERNAL TRANSFER sam 4.4, electrical-inspection Electrical rough-in inspection rework MITIGATING 3 3 TECHNICAL MITIGATE nadia 4.2, material-escalation Steel & concrete price escalation ACCEPTED 4 3 EXTERNAL ACCEPT omar 3.2, crane-availability Tower crane scheduling conflict OPEN 2 3 ORGANIZATIONAL MITIGATE tom Crane window booked and confirmed for the structural phase. 3.3, commissioning-delay Building-systems commissioning slips occupancy OPEN 3 4 TECHNICAL MITIGATE diego 5.2 |  |  |  |  |  |  |  |  |  |
|  | · Site Prep |  |  |  |  |  |  |  | 1 | waterfall |  |  |  |  |  |  |  |
|  | · Mobilize site |  |  |  |  |  |  |  | 1.1 | waterfall | COMPLETE | 100.0 | nadia | 4 | A-90 | 3 4 8 |  |
|  | · Clear & grade |  |  |  |  |  |  |  | 1.2 | waterfall | COMPLETE | 100.0 | omar | 6 | A-82 | 4 6 11 |  |
|  | · Temporary utilities |  |  |  |  |  |  |  | 1.3 | waterfall | COMPLETE | 100.0 | diego | 3 | A-70 | 2 3 6 |  |
|  | · Site survey sign-off |  |  |  |  |  |  |  | 1.4 | waterfall | COMPLETE | 100.0 | tom | 2 | A-64 | 1 2 4 |  |
|  | · Foundation |  |  |  |  |  |  |  | 2 | waterfall |  |  |  |  |  |  |  |
|  | · Excavate footings |  |  |  |  |  |  |  | 2.1 | waterfall | COMPLETE | 100.0 | omar | 5 | A-60 | 4 5 10 |  |
|  | · Rebar & formwork |  |  |  |  |  |  |  | 2.2 | waterfall | COMPLETE | 100.0 | diego | 6 | A-50 | 4 6 11 |  |
|  | · Pour east footing |  |  |  |  |  |  |  | 2.3 | waterfall | COMPLETE | 100.0 | tom | 3 | A-38 | 2 3 6 |  |
|  | · Pour west footing |  |  |  |  |  |  |  | 2.4 | waterfall | COMPLETE | 100.0 | nadia | 3 | A-32 | 2 3 6 |  |
|  | · Cure & strip forms |  |  |  |  |  |  |  | 2.5 | waterfall | COMPLETE | 100.0 | omar | 4 | A-26 | 3 4 8 |  |
|  | · Framing |  |  |  |  |  |  |  | 3 | waterfall |  |  |  |  |  |  |  |
|  | · Steel erection |  |  |  |  |  |  |  | 3.1 | waterfall | IN_PROGRESS | 35.0 | diego | 8 | A-18 | 6 8 15 |  |
|  | · Floor decking |  |  |  |  |  |  |  | 3.2 | waterfall | IN_PROGRESS | 35.0 | tom | 6 | A-2 | 4 6 11 |  |
|  | · Roof structure |  |  |  |  |  |  |  | 3.3 | waterfall | IN_PROGRESS | 35.0 | nadia | 7 | A+10 | 5 7 13 |  |
|  | · Framing inspection |  |  |  |  |  |  |  | 3.4 | waterfall | IN_PROGRESS | 35.0 | omar | 2 | A+24 | 1 2 4 |  |
|  | · MEP |  |  |  |  |  |  |  | 4 | waterfall |  |  |  |  |  |  |  |
|  | · Rough-in electrical |  |  |  |  |  |  |  | 4.1 | waterfall | NOT_STARTED | 0.0 | tom | 7 | A+28 | 5 7 13 |  |
|  | · Rough-in plumbing |  |  |  |  |  |  |  | 4.2 | waterfall | NOT_STARTED | 0.0 | nadia | 6 | A+42 | 4 6 11 |  |
|  | · HVAC ductwork |  |  |  |  |  |  |  | 4.3 | waterfall | NOT_STARTED | 0.0 | omar | 8 | A+54 | 6 8 15 |  |
|  | · MEP equipment delivery |  |  |  |  |  |  |  | 4.4 | waterfall | NOT_STARTED | 0.0 | diego | 5 | A+70 | 4 5 10 |  |
|  | · MEP inspection |  |  |  |  |  |  |  | 4.5 | waterfall | NOT_STARTED | 0.0 | tom | 3 | A+80 | 2 3 6 |  |
|  | · Finish-out |  |  |  |  |  |  |  | 5 | waterfall |  |  |  |  |  |  |  |
|  | · Drywall & paint |  |  |  |  |  |  |  | 5.1 | waterfall | NOT_STARTED | 0.0 | nadia | 8 | A+86 | 6 8 15 |  |
|  | · Flooring |  |  |  |  |  |  |  | 5.2 | waterfall | NOT_STARTED | 0.0 | omar | 6 | A+102 | 4 6 11 |  |
|  | · Fixtures & casework |  |  |  |  |  |  |  | 5.3 | waterfall | NOT_STARTED | 0.0 | diego | 5 | A+114 | 4 5 10 |  |
|  | · Commissioning start |  |  |  |  |  |  |  | 5.4 | milestone | NOT_STARTED | 0.0 | tom |  |  |  | True |
|  | · Final inspection & handover |  |  |  |  |  |  |  | 5.5 | waterfall | NOT_STARTED | 0.0 | nadia | 3 | A+126 | 2 3 6 |  |
